# 甘特图1

Schedule from MS Project, 2017-09-28 to 2018-01-14, 2 hours a day, costs in ¥.

## Calendars

- “24 小时”的副本: Mon-Sun 19:00-21:00.

## Resources

| Resource | Rate |
| --- | --- |
| 李文杰 | 28.83 |
| 赵伟 | 28.83 |
| 陈启强 | 28.83 |
| 余泽伟 | 28.83 |

## Schedule

| ID | WBS | Task | Type | Duration | Start | Finish | Predecessors | Constraint | Resources | Work | Cost |
| --- | --- | --- | --- | --- | --- | --- | --- | --- | --- | --- | --- |
| 1 | 11 | **项目启动** |  | 23d | 2017-09-28 | 2017-10-20 |  |  |  | 72.35h | 2,085.85 |
| 2 | 11.1 | 团队建立 | manual | 1d | 2017-09-28 | 2017-09-28 |  |  | 李文杰 [50%]; 余泽伟 [50%]; 赵伟 [50%]; 陈启强 [50%] | 3.05h | 87.93 |
| 3 | 11.9 | 搜集文档模板并确定模版标准 | manual | 3d | 2017-09-29 | 2017-10-01 | 2 |  | 李文杰 [50%]; 赵伟 [50%]; 余泽伟 [50%]; 陈启强 [50%] | 12h | 345.96 |
| 4 | 11.2 | 软件安装 | manual | 5d | 2017-10-03 | 2017-10-07 | 3 |  | 李文杰 [20%]; 余泽伟 [20%]; 赵伟 [20%]; 陈启强 [20%] | 8h | 230.64 |
| 5 | 11.4 | 撰写《可行性研究报告》并进行初次提交 | manual | 6d | 2017-10-02 | 2017-10-07 | 3 | start no earlier than 2017-10-08 | 赵伟 | 12h | 345.96 |
| 6 | 11.12 | 撰写《项目开发设计》报告并进行初次提交 | manual | 6d | 2017-10-02 | 2017-10-07 | 3 |  | 陈启强 | 12h | 345.96 |
| 7 | 11.5 | 修改《可行性研究报告》 | manual | 7d | 2017-10-08 | 2017-10-14 | 5 | start no earlier than 2017-10-13 | 余泽伟 [80%] | 11.2h | 322.9 |
| 8 | 11.13 | 修改《项目开发设计》报告 | manual | 7d | 2017-10-08 | 2017-10-14 | 6 |  | 李文杰 | 14h | 403.62 |
| 9 | 11.11 | 提交《可行性研究报告》与《项目开发设计》报告 | milestone, manual | 1d | 2017-10-20 | 2017-10-20 | 7 |  | 陈启强 [5%] | 0.1h | 2.88 |
| 10 | 12 | **项目规划** |  | 15d | 2017-10-20 | 2017-11-03 | 1 |  |  | 126.3h | 3,641.23 |
| 11 | 12.4 | 撰写《项目章程》 | manual | 5d | 2017-10-20 | 2017-10-24 |  | start no earlier than 2017-10-20 | 余泽伟 | 10h | 288.3 |
| 12 | 12.5 | 撰写《项目总体计划》 | manual | 5d | 2017-10-23 | 2017-10-27 |  | start no earlier than 2017-10-23 | 李文杰 [200%] | 20h | 576.6 |
| 13 | 2.3 | 撰写《需求工程计划--初步》并提交 | manual | 5d | 2017-10-23 | 2017-10-27 |  |  | 赵伟 | 10h | 288.3 |
| 14 | 12.45 | UM概述ppt制作 | milestone, manual | 4d | 2017-10-25 | 2017-10-28 |  |  | 余泽伟 | 8h | 230.64 |
| 15 | 2.5 | 撰写WBS图、OBS图、gantt图 | manual | 2d | 2017-10-23 | 2017-10-24 |  | start no earlier than 2017-10-23 | 李文杰; 陈启强; 余泽伟 | 12h | 345.96 |
| 16 | 12.12 | 提交《项目章程》、《项目总体计划》 | milestone, manual | 1d | 2017-10-25 | 2017-10-25 | 12, 11 |  | 陈启强 [5%] | 0.1h | 2.88 |
| 17 | 2.7 | 撰写《QA计划》 | manual | 5d | 2017-10-30 | 2017-11-03 | 16 |  | 李文杰 | 10h | 288.3 |
| 18 | 2.8 | 提交《QA计划》和项目各类修改文档 | milestone, manual | 1d | 2017-11-03 | 2017-11-03 | 17 |  | 陈启强 [10%] | 0.2h | 5.77 |
| 19 | 12.40 | 修改《需求工程项目计划》 | manual | 7d | 2017-10-28 | 2017-11-03 | 13 |  | 余泽伟; 陈启强; 李文杰; 赵伟 | 56h | 1,614.48 |
| 20 | 13 | **项目执行** |  | 52d | 2017-11-05 | 2017-12-26 | 10 |  |  | 247.6h | 7,138.31 |
| 21 | 13.1 | 《需求工程项目计划》评审 | milestone, manual | 4d | 2017-11-06 | 2017-11-09 | 19 | start no earlier than 2017-11-06 | 李文杰; 余泽伟; 赵伟; 陈启强 | 32h | 922.56 |
| 22 | 3.2 | 修改《需求工程项目计划》 | manual | 2d | 2017-11-10 | 2017-11-11 | 21 |  | 李文杰 [80%] | 3.2h | 92.26 |
| 23 | 3.3 | 提交《需求工程项目计划》 | milestone, manual | 1d | 2017-11-12 | 2017-11-12 | 22 |  | 陈启强 [5%] | 0.1h | 2.88 |
| 24 | 13.2 | **需求分析** |  | 44d | 2017-11-13 | 2017-12-26 |  |  |  | 212.3h | 6,120.61 |
| 25 | 13.2.86 | **撰写《用户代表确认文档》** |  | 2d | 2017-11-14 | 2017-11-15 |  |  |  | 12h | 345.96 |
| 26 | 13.2.86.1 | 撰写《教师代表确认文档》 | manual | 1d | 2017-11-15 | 2017-11-15 |  |  | 李文杰 [200%] | 4h | 115.32 |
| 27 | 13.2.86.2 | 撰写《学生代表确认文档》 | manual | 1d | 2017-11-15 | 2017-11-15 |  |  | 赵伟 [200%] | 4h | 115.32 |
| 28 | 13.2.86.3 | 撰写《管理员代表确认文档》 | manual | 1d | 2017-11-15 | 2017-11-15 |  |  | 余泽伟 [200%] | 4h | 115.32 |
| 29 | 13.2.32 | 界面原型设计-初步 | manual | 3d | 2017-11-17 | 2017-11-19 | 25 |  | 陈启强; 李文杰; 余泽伟; 赵伟 | 24h | 691.92 |

| ID | WBS | Task | Type | Duration | Start | Finish | Predecessors | Resources | Work | Cost |
| --- | --- | --- | --- | --- | --- | --- | --- | --- | --- | --- |
| 30 | 13.2.116 | **撰写用例文档** |  | 5.5d | 2017-11-17 | 2017-11-22 | 29 |  | 58.8h | 1,695.2 |
| 31 | 13.2.116.1 | 撰写《教师用例文档》 | manual | 3d | 2017-11-17 | 2017-11-19 |  | 李文杰 [300%] | 18h | 518.94 |
| 32 | 13.2.116.2 | 撰写《学生用例文档》 | manual | 3d | 2017-11-17 | 2017-11-19 |  | 赵伟 [300%] | 18h | 518.94 |
| 33 | 13.2.116.3 | 撰写《管理员用例文档》 | manual | 3d | 2017-11-17 | 2017-11-19 |  | 余泽伟 [300%] | 18h | 518.94 |
| 34 | 13.2.116.4 | 撰写《游客用例文档》 | manual | 3d | 2017-11-19 | 2017-11-21 |  | 陈启强 [80%] | 4.8h | 138.38 |
| 35 | 13.2.34 | 《前景与范围文档》修改 | manual | 1d | 2017-11-20 | 2017-11-20 |  |  |  |  |
| 36 | 13.2.38 | 提交《用例与用例文档》、界面原型、《前景与范围》、《用户群分类》 | manual | 1d | 2017-11-20 | 2017-11-20 | 25, 29 | 陈启强 [5%] | 0.1h | 2.88 |
| 37 | 13.2.95 | 修改《学生用例文档》 | manual | 3d | 2017-11-22 | 2017-11-24 | 36 | 赵伟 [80%] | 4.8h | 138.38 |
| 38 | 13.2.87 | 第一次访谈客户代表 | manual | 0.5d | 2017-11-26 | 2017-11-26 | 36 | 李文杰; 赵伟; 余泽伟; 陈启强 | 4h | 115.32 |
| 39 | 13.2.94 | 第一次访谈教师代表 | manual | 1d | 2017-11-26 | 2017-11-26 | 36 | 李文杰; 赵伟; 余泽伟; 陈启强 | 8h | 230.64 |
| 40 | 3.4.9 | 修改界面原型 | manual | 2d | 2017-11-26 | 2017-11-27 |  |  |  |  |
| 41 | 13.2.98 | 修改《教师用例文档》 | manual | 2d | 2017-11-26 | 2017-11-27 |  | 李文杰 [80%] | 3.2h | 92.26 |
| 42 | 13.2.96 | 修改《学生用例文档》 | manual | 3d | 2017-12-01 | 2017-12-03 | 39 | 赵伟 [80%] | 4.8h | 138.38 |
| 43 | 13.2.121 | 撰写《数据字典》 | manual | 1d | 2017-12-03 | 2017-12-03 | 39 | 李文杰 [150%]; 赵伟 [150%]; 余泽伟 [150%]; 陈启强 [150%] | 12h | 345.96 |
| 44 | 3.4.13 | 提交《用例与用例文档》、界面原型、ER图、《需求规格说明书》 | manual | 1d | 2017-12-04 | 2017-12-04 | 39 | 陈启强 [5%] | 0.1h | 2.88 |
| 45 | 13.2.93 | 第二次访谈教师代表 | manual | 1d | 2017-12-05 | 2017-12-05 | 39 | 李文杰; 赵伟; 余泽伟; 陈启强 | 10h | 288.3 |
| 46 | 13.2.129 | 修改界面原型 | manual | 2d | 2017-12-06 | 2017-12-07 | 45 |  |  |  |
| 47 | 13.2.99 | 修改《教师用例文档》 | manual | 1d | 2017-12-05 | 2017-12-05 |  | 李文杰 [80%] | 1.6h | 46.13 |
| 48 | 13.2.122 | 修改数据字典 | manual | 3d | 2017-12-05 | 2017-12-07 |  | 李文杰 [80%]; 赵伟 [80%]; 余泽伟 [80%] | 14.4h | 415.15 |
| 49 | 13.2.124 | 撰写《软件用户手册》 | manual | 1d | 2017-12-07 | 2017-12-07 | 36 |  |  |  |
| 50 | 13.2.92 | 草拟需求规格说明书 | manual | 3d | 2017-12-09 | 2017-12-11 | 36 | 陈启强 [400%] | 24h | 691.92 |
| 51 | 13.2.100 | 修改《教师用例文档》 | manual | 2d | 2017-12-09 | 2017-12-10 | 41 | 李文杰 [80%] | 3.2h | 92.26 |
| 52 | 13.2.91 | 修改《学生用例文档》 | manual | 1d | 2017-12-10 | 2017-12-10 | 42 | 赵伟 [80%] | 1.6h | 46.13 |
| 53 | 13.2.109 | 修改《软件需求规格说明书》 | manual | 2d | 2017-12-15 | 2017-12-16 |  | 陈启强 [80%] | 3.2h | 92.26 |
| 54 | 13.2.90 | 修改《管理员用例文档》 | manual | 1d | 2017-12-16 | 2017-12-16 |  | 余泽伟 [80%] | 1.6h | 46.13 |
| 55 | 13.2.89 | 修改《教师用例文档》 | manual | 1d | 2017-12-16 | 2017-12-16 | 51 | 李文杰 [80%] | 1.6h | 46.13 |
| 56 | 13.2.105 | 修改《教师测试用例》 | manual | 1d | 2017-12-16 | 2017-12-16 |  | 李文杰 [80%] | 1.6h | 46.13 |
| 57 | 13.2.123 | 修改数据字典 | manual | 2d | 2017-12-15 | 2017-12-16 | 48 | 李文杰 [80%]; 陈启强 [80%] | 6.4h | 184.51 |
| 58 | 13.2.126 | 修改《软件用户手册》 | manual | 1d | 2017-12-18 | 2017-12-18 |  |  |  |  |
| 59 | 3.4.28 | 提交修改《软件需求规格说明书》、对话框图、数据流图 | manual | 1d | 2017-12-18 | 2017-12-18 |  | 陈启强 [5%] | 0.1h | 2.88 |
| 60 | 13.2.113 | 修改《软件需求规格说明书》 | manual | 2d | 2017-12-20 | 2017-12-21 | 53 | 陈启强 [80%] | 3.2h | 92.26 |
| 61 | 13.2.111 | JAD会议 | manual | 1d | 2017-12-21 | 2017-12-21 | 50 | 李文杰; 赵伟; 余泽伟; 陈启强 | 8h | 230.64 |

| ID | WBS | Task | Type | Duration | Start | Finish | Predecessors | Resources | Work | Cost |
| --- | --- | --- | --- | --- | --- | --- | --- | --- | --- | --- |
| 62 | 178 | **项目控制** |  | 20d | 2017-12-19 | 2018-01-07 |  |  | 15h | 432.45 |
| 63 | 178.1 | **需求变更** |  | 10d | 2017-12-19 | 2017-12-28 |  |  | 15h | 432.45 |
| 64 | 178.1.52 | 撰写《需求变更文档》并提交 | manual | 3d | 2017-12-20 | 2017-12-22 |  | 余泽伟 [150%] | 9h | 259.47 |
| 65 | 4.1.2 | 撰写《需求变更申请报告》并提交 | manual | 3d | 2017-12-23 | 2017-12-25 |  | 李文杰 | 6h | 172.98 |
| 66 | 179 | **项目收尾** |  | 17d | 2017-12-29 | 2018-01-14 | 62 |  | 59.6h | 1,718.27 |
| 67 | 179.23 | 撰写《项目绩效评价》 | manual | 2d | 2017-12-29 | 2017-12-30 |  | 余泽伟 [150%] | 6h | 172.98 |
| 68 | 179.11 | 撰写《系统设计与实现计划》 | manual | 1d | 2018-01-10 | 2018-01-10 |  | 李文杰 [200%] | 4h | 115.32 |
| 69 | 179.24 | 撰写《软件概要设计说明》 | manual | 4d | 2017-10-10 | 2017-10-13 |  |  |  |  |
| 70 | 179.4 | 撰写《测试计划》 | manual | 3d | 2018-01-03 | 2018-01-05 |  | 李文杰 [200%] | 12h | 345.96 |
| 71 | 179.9 | 撰写《安装部署计划》 | manual | 4d | 2017-12-31 | 2018-01-03 |  | 余泽伟 [150%] | 12h | 345.96 |
| 72 | 179.5 | 撰写《培训计划》 | manual | 2d | 2018-01-06 | 2018-01-07 |  |  | 6h | 172.98 |
| 73 | 179.6 | 撰写《系统维护计划》 | manual | 2d | 2018-01-08 | 2018-01-09 |  |  | 8h | 230.64 |
| 74 | 179.14 | 修改整理各类旧文档及PPT | manual | 1d | 2018-01-11 | 2018-01-11 |  | 赵伟; 陈启强; 李文杰; 余泽伟 | 8h | 230.64 |
| 75 | 179.18 | 撰写《项目总结报告》及PPT | manual | 1d | 2018-01-12 | 2018-01-12 |  | 陈启强 | 2h | 57.66 |
| 76 | 179.22 | 修改《项目总结报告》 | manual | 1d | 2018-01-13 | 2018-01-13 | 75 | 陈启强 [80%] | 1.6h | 46.13 |
| 77 | 179.20 | 评审 | milestone, manual | 0d | 2018-01-14 | 2018-01-14 | 76 | 李文杰; 余泽伟; 赵伟; 陈启强 |  |  |
